| ws_id | name | pkg_id | template_id | discipline | wbs_code | calendar | quantity | uom | budget_hours | duration_days | crew_size | complete_pct_type | account | codes | crew | steps | planned_start | planned_finish | state | p6_activity_id | run_id | predecessors |
| --- | --- | --- | --- | --- | --- | --- | --- | --- | --- | --- | --- | --- | --- | --- | --- | --- | --- | --- | --- | --- | --- | --- |
| CIV-1010-0010 | Foundation — pile cap 01 | CWP-1010 | T-CIV-010 | CIV | DEMO.CON.CIV | 5x10 Construction | 195.5 | CY | 2168.1 | 36 | 6 | Physical | 10-100 | AREA-100 CIV CWP-1010 | CARP 34, RODBUSTER 30, CIVIL-CRW 22, HELPER 14 | Excavate and prepare 15, Formwork set 25, Rebar placed 25, Concrete poured 25, Strip and backfill 10 | 2026-05-18 | 2026-07-07 | In progress | CIV-1010-0010 | RUN-0002 |  |
| CIV-1010-0020 | Foundation — pedestal group 02 | CWP-1010 | T-CIV-010 | CIV | DEMO.CON.CIV | 5x10 Construction | 192.6 | CY | 2135.9 | 36 | 6 | Physical | 10-100 | AREA-100 CIV CWP-1010 | CARP 34, RODBUSTER 30, CIVIL-CRW 22, HELPER 14 | Excavate and prepare 15, Formwork set 25, Rebar placed 25, Concrete poured 25, Strip and backfill 10 | 2026-06-11 | 2026-07-31 | In progress | CIV-1010-0020 | RUN-0002 | CIV-1010-0010 FS 0 |
| CIV-1010-0030 | Foundation — equipment foundation 03 | CWP-1010 | T-CIV-010 | CIV | DEMO.CON.CIV | 5x10 Construction | 175.3 | CY | 1944.1 | 32 | 6 | Physical | 10-100 | AREA-100 CIV CWP-1010 | CARP 34, RODBUSTER 30, CIVIL-CRW 22, HELPER 14 | Excavate and prepare 15, Formwork set 25, Rebar placed 25, Concrete poured 25, Strip and backfill 10 | 2026-07-07 | 2026-08-20 | In progress | CIV-1010-0030 | RUN-0002 | CIV-1010-0020 FS 0 |
| CIV-1010-0040 | Foundation — sump 04 | CWP-1010 | T-CIV-010 | CIV | DEMO.CON.CIV | 5x10 Construction | 197.6 | CY | 2191.4 | 37 | 6 | Physical | 10-100 | AREA-100 CIV CWP-1010 | CARP 34, RODBUSTER 30, CIVIL-CRW 22, HELPER 14, CIVIL-LAB-B 12 | Excavate and prepare 15, Formwork set 25, Rebar placed 25, Concrete poured 25, Strip and backfill 10 | 2026-07-29 | 2026-09-18 | In progress | CIV-1010-0040 | RUN-0002 | CIV-1010-0030 FS 0 |
| CIV-1010-0050 | Foundation — duct bank 05 | CWP-1010 | T-CIV-010 | CIV | DEMO.CON.CIV | 5x10 Construction | 189.2 | CY | 2098.2 | 35 | 6 | Physical | 10-100 | AREA-100 CIV CWP-1010 | CARP 34, RODBUSTER 30, CIVIL-CRW 22, HELPER 14 | Excavate and prepare 15, Formwork set 25, Rebar placed 25, Concrete poured 25, Strip and backfill 10 | 2026-08-24 | 2026-10-12 | In progress | CIV-1010-0050 | RUN-0002 | CIV-1010-0040 FS 0 |
| CIV-1010-0060 | Foundation — slab panel 06 | CWP-1010 | T-CIV-010 | CIV | DEMO.CON.CIV | 5x10 Construction | 153.2 | CY | 1699.0 | 28 | 6 | Physical | 10-100 | AREA-100 CIV CWP-1010 | CARP 34, RODBUSTER 30, CIVIL-CRW 22, HELPER 14 | Excavate and prepare 15, Formwork set 25, Rebar placed 25, Concrete poured 25, Strip and backfill 10 | 2026-09-16 | 2026-10-26 | Loaded | CIV-1010-0060 | RUN-0002 | CIV-1010-0050 FS 0 |
| CIV-1010-0070 | Foundation — pile cap 07 | CWP-1010 | T-CIV-010 | CIV | DEMO.CON.CIV | 5x10 Construction | 180.7 | CY | 2004.0 | 33 | 6 | Physical | 10-100 | AREA-100 CIV CWP-1010 | CARP 34, RODBUSTER 30, CIVIL-CRW 22, HELPER 14 | Excavate and prepare 15, Formwork set 25, Rebar placed 25, Concrete poured 25, Strip and backfill 10 | 2026-10-06 | 2026-11-20 | Loaded | CIV-1010-0070 | RUN-0002 | CIV-1010-0060 FS 0 |
| CIV-1010-0080 | Foundation — pedestal group 08 | CWP-1010 | T-CIV-010 | CIV | DEMO.CON.CIV | 5x10 Construction | 150.3 | CY | 1666.8 | 28 | 6 | Physical | 10-100 | AREA-100 CIV CWP-1010 | CARP 34, RODBUSTER 30, CIVIL-CRW 22, HELPER 14 | Excavate and prepare 15, Formwork set 25, Rebar placed 25, Concrete poured 25, Strip and backfill 10 | 2026-10-28 | 2026-12-07 | Loaded | CIV-1010-0080 | RUN-0002 | CIV-1010-0070 FS 0 |
| CIV-1010-0090 | Foundation — equipment foundation 09 | CWP-1010 | T-CIV-010 | CIV | DEMO.CON.CIV | 5x10 Construction | 142.0 | CY | 1574.8 | 26 | 6 | Physical | 10-100 | AREA-100 CIV CWP-1010 | CARP 34, RODBUSTER 30, CIVIL-CRW 22, HELPER 14 | Excavate and prepare 15, Formwork set 25, Rebar placed 25, Concrete poured 25, Strip and backfill 10 | 2026-11-17 | 2026-12-23 | Loaded | CIV-1010-0090 | RUN-0002 | CIV-1010-0080 FS 0 |
| CIV-1010-0100 | Foundation — sump 10 | CWP-1010 | T-CIV-010 | CIV | DEMO.CON.CIV | 5x10 Construction | 185.6 | CY | 2058.3 | 34 | 6 | Physical | 10-100 | AREA-100 CIV CWP-1010 | CARP 34, RODBUSTER 30, CIVIL-CRW 22, HELPER 14 | Excavate and prepare 15, Formwork set 25, Rebar placed 25, Concrete poured 25, Strip and backfill 10 | 2026-12-04 | 2027-01-21 | Loaded | CIV-1010-0100 | RUN-0002 | CIV-1010-0090 FS 0 |
| CIV-1010-0110 | Foundation — duct bank 11 | CWP-1010 | T-CIV-010 | CIV | DEMO.CON.CIV | 5x10 Construction | 138.5 | CY | 1536.0 | 26 | 6 | Physical | 10-100 | AREA-100 CIV CWP-1010 | CARP 34, RODBUSTER 30, CIVIL-CRW 22, HELPER 14 | Excavate and prepare 15, Formwork set 25, Rebar placed 25, Concrete poured 25, Strip and backfill 10 | 2026-12-29 | 2027-02-03 | Loaded | CIV-1010-0110 | RUN-0002 | CIV-1010-0100 FS 0 |
| CIV-1010-0120 | Foundation — slab panel 12 | CWP-1010 | T-CIV-010 | CIV | DEMO.CON.CIV | 5x10 Construction | 174.2 | CY | 1931.9 | 32 | 6 | Physical | 10-100 | AREA-100 CIV CWP-1010 | CARP 34, RODBUSTER 30, CIVIL-CRW 22, HELPER 14 | Excavate and prepare 15, Formwork set 25, Rebar placed 25, Concrete poured 25, Strip and backfill 10 | 2027-01-15 | 2027-03-02 | Loaded | CIV-1010-0120 | RUN-0002 | CIV-1010-0110 FS 0 |
| CIV-1010-0130 | Foundation — pile cap 13 | CWP-1010 | T-CIV-010 | CIV | DEMO.CON.CIV | 5x10 Construction | 143.5 | CY | 1591.4 | 27 | 6 | Physical | 10-100 | AREA-100 CIV CWP-1010 | CARP 34, RODBUSTER 30, CIVIL-CRW 22, HELPER 14 | Excavate and prepare 15, Formwork set 25, Rebar placed 25, Concrete poured 25, Strip and backfill 10 | 2027-02-08 | 2027-03-17 | Loaded | CIV-1010-0130 | RUN-0002 | CIV-1010-0120 FS 0 |
| CIV-1010-0140 | Foundation — pedestal group 14 | CWP-1010 | T-CIV-010 | CIV | DEMO.CON.CIV | 5x10 Construction | 188.4 | CY | 2089.4 | 35 | 6 | Physical | 10-100 | AREA-100 CIV CWP-1010 | CARP 34, RODBUSTER 30, CIVIL-CRW 22, HELPER 14 | Excavate and prepare 15, Formwork set 25, Rebar placed 25, Concrete poured 25, Strip and backfill 10 | 2027-02-25 | 2027-04-15 | Loaded | CIV-1010-0140 | RUN-0002 | CIV-1010-0130 FS 0 |
| STL-1020-0010 | Structural steel erection — column line 01 | CWP-1020 | T-STL-010 | STL | DEMO.CON.STL | 5x10 Construction | 64.3 | TON | 1283.4 | 16 | 8 | Physical | 10-200 | AREA-100 STL CWP-1020 | IRONWKR 52, CRANE-100T 18, HELPER 30 | Shake out and rig 15, Steel set 45, Bolt up 25, Plumb and align 15 | 2026-06-15 | 2026-07-07 | In progress | STL-1020-0010 | RUN-0003 |  |
| STL-1020-0020 | Structural steel erection — beam tier 02 | CWP-1020 | T-STL-010 | STL | DEMO.CON.STL | 5x10 Construction | 53.0 | TON | 1057.9 | 13 | 8 | Physical | 10-200 | AREA-100 STL CWP-1020 | IRONWKR 52, CRANE-100T 18, HELPER 30 | Shake out and rig 15, Steel set 45, Bolt up 25, Plumb and align 15 | 2026-06-25 | 2026-07-14 | In progress | STL-1020-0020 | RUN-0003 | STL-1020-0010 FS 0 |
| STL-1020-0030 | Structural steel erection — bracing bay 03 | CWP-1020 | T-STL-010 | STL | DEMO.CON.STL | 5x10 Construction | 50.1 | TON | 1000.0 | 12 | 8 | Physical | 10-200 | AREA-100 STL CWP-1020 | IRONWKR 52, CRANE-100T 18, HELPER 30 | Shake out and rig 15, Steel set 45, Bolt up 25, Plumb and align 15 | 2026-07-03 | 2026-07-21 | In progress | STL-1020-0030 | RUN-0003 | STL-1020-0020 FS 0 |
| STL-1020-0040 | Structural steel erection — platform 04 | CWP-1020 | T-STL-010 | STL | DEMO.CON.STL | 5x10 Construction | 64.6 | TON | 1289.4 | 16 | 8 | Physical | 10-200 | AREA-100 STL CWP-1020 | IRONWKR 52, CRANE-100T 18, HELPER 30 | Shake out and rig 15, Steel set 45, Bolt up 25, Plumb and align 15 | 2026-07-13 | 2026-08-04 | In progress | STL-1020-0040 | RUN-0003 | STL-1020-0030 FS 0 |
| STL-1020-0050 | Structural steel erection — stair run 05 | CWP-1020 | T-STL-010 | STL | DEMO.CON.STL | 5x10 Construction | 52.1 | TON | 1039.9 | 13 | 8 | Physical | 10-200 | AREA-100 STL CWP-1020 | IRONWKR 52, CRANE-100T 18, HELPER 30 | Shake out and rig 15, Steel set 45, Bolt up 25, Plumb and align 15 | 2026-07-23 | 2026-08-11 | In progress | STL-1020-0050 | RUN-0003 | STL-1020-0040 FS 0 |
| STL-1020-0060 | Structural steel erection — column line 06 | CWP-1020 | T-STL-010 | STL | DEMO.CON.STL | 5x10 Construction | 51.6 | TON | 1029.9 | 13 | 8 | Physical | 10-200 | AREA-100 STL CWP-1020 | IRONWKR 52, CRANE-100T 18, HELPER 30 | Shake out and rig 15, Steel set 45, Bolt up 25, Plumb and align 15 | 2026-07-31 | 2026-08-19 | In progress | STL-1020-0060 | RUN-0003 | STL-1020-0050 FS 0 |
| STL-1020-0070 | Structural steel erection — beam tier 07 | CWP-1020 | T-STL-010 | STL | DEMO.CON.STL | 5x10 Construction | 60.6 | TON | 1209.6 | 15 | 8 | Physical | 10-200 | AREA-100 STL CWP-1020 | IRONWKR 52, CRANE-100T 18, HELPER 30 | Shake out and rig 15, Steel set 45, Bolt up 25, Plumb and align 15 | 2026-08-10 | 2026-08-31 | In progress | STL-1020-0070 | RUN-0003 | STL-1020-0060 FS 0 |
| STL-1020-0080 | Structural steel erection — bracing bay 08 | CWP-1020 | T-STL-010 | STL | DEMO.CON.STL | 5x10 Construction | 57.4 | TON | 1145.7 | 14 | 8 | Physical | 10-200 | AREA-100 STL CWP-1020 | IRONWKR 52, CRANE-100T 18, HELPER 30 | Shake out and rig 15, Steel set 45, Bolt up 25, Plumb and align 15 | 2026-08-19 | 2026-09-08 | In progress | STL-1020-0080 | RUN-0003 | STL-1020-0070 FS 0 |
| STL-1020-0090 | Structural steel erection — platform 09 | CWP-1020 | T-STL-010 | STL | DEMO.CON.STL | 5x10 Construction | 52.8 | TON | 1053.9 | 13 | 8 | Physical | 10-200 | AREA-100 STL CWP-1020 | IRONWKR 52, CRANE-100T 18, HELPER 30 | Shake out and rig 15, Steel set 45, Bolt up 25, Plumb and align 15 | 2026-08-28 | 2026-09-16 | Loaded | STL-1020-0090 | RUN-0003 | STL-1020-0080 FS 0 |
| STL-1020-0100 | Structural steel erection — stair run 10 | CWP-1020 | T-STL-010 | STL | DEMO.CON.STL | 5x10 Construction | 53.1 | TON | 1059.9 | 13 | 8 | Physical | 10-200 | AREA-100 STL CWP-1020 | IRONWKR 52, CRANE-100T 18, HELPER 30 | Shake out and rig 15, Steel set 45, Bolt up 25, Plumb and align 15 | 2026-09-07 | 2026-09-24 | Loaded | STL-1020-0100 | RUN-0003 | STL-1020-0090 FS 0 |
| STL-1020-0110 | Structural steel erection — column line 11 | CWP-1020 | T-STL-010 | STL | DEMO.CON.STL | 5x10 Construction | 62.9 | TON | 1255.5 | 16 | 8 | Physical | 10-200 | AREA-100 STL CWP-1020 | IRONWKR 52, CRANE-100T 18, HELPER 30 | Shake out and rig 15, Steel set 45, Bolt up 25, Plumb and align 15 | 2026-09-15 | 2026-10-07 | Loaded | STL-1020-0110 | RUN-0003 | STL-1020-0100 FS 0 |
| STL-1020-0120 | Structural steel erection — beam tier 12 | CWP-1020 | T-STL-010 | STL | DEMO.CON.STL | 5x10 Construction | 60.9 | TON | 1215.6 | 15 | 8 | Physical | 10-200 | AREA-100 STL CWP-1020 | IRONWKR 52, CRANE-100T 18, HELPER 30 | Shake out and rig 15, Steel set 45, Bolt up 25, Plumb and align 15 | 2026-09-25 | 2026-10-16 | Loaded | STL-1020-0120 | RUN-0003 | STL-1020-0110 FS 0 |
| PIP-1030-0010 | Pipe erection — line group 01 | CWP-1030 | T-PIP-010 | PIP | DEMO.CON.PIP | 5x10 Construction | 562.0 | LF | 528.3 | 5 | 10 | Physical | 10-300 | AREA-100 PIP CWP-1030 | PIPEFTR 44, WELDER 26, MANLIFT 10, HELPER 20 | Spools received 10, Supports set 20, Spools erected 35, Welds complete 25, Punch cleared 10 | 2026-10-05 | 2026-10-12 | Validated |  |  |  |
| PIP-1030-0020 | Pipe erection — rack module 02 | CWP-1030 | T-PIP-010 | PIP | DEMO.CON.PIP | 5x10 Construction | 590.2 | LF | 554.8 | 6 | 10 | Physical | 10-300 | AREA-100 PIP CWP-1030 | PIPEFTR 44, WELDER 26, MANLIFT 10, HELPER 20 | Spools received 10, Supports set 20, Spools erected 35, Welds complete 25, Punch cleared 10 | 2026-10-07 | 2026-10-15 | Validated |  |  | PIP-1030-0010 FS 0 |
| PIP-1030-0030 | Pipe erection — tie-in set 03 | CWP-1030 | T-PIP-010 | PIP | DEMO.CON.PIP | 5x10 Construction | 588.6 | LF | 553.3 | 6 | 10 | Physical | 10-300 | AREA-100 PIP CWP-1030 | PIPEFTR 44, WELDER 26, MANLIFT 10, HELPER 20 | Spools received 10, Supports set 20, Spools erected 35, Welds complete 25, Punch cleared 10 | 2026-10-12 | 2026-10-20 | Validated |  |  | PIP-1030-0020 FS 0 |
| PIP-1030-0040 | Pipe erection — valve station 04 | CWP-1030 | T-PIP-010 | PIP | DEMO.CON.PIP | 5x10 Construction | 722.4 | LF | 679.1 | 7 | 10 | Physical | 10-300 | AREA-100 PIP CWP-1030 | PIPEFTR 44, WELDER 26, MANLIFT 10, HELPER 20 | Spools received 10, Supports set 20, Spools erected 35, Welds complete 25, Punch cleared 10 | 2026-10-15 | 2026-10-26 | Validated |  |  | PIP-1030-0030 FS 0 |
| PIP-1030-0050 | Pipe erection — drain header 05 | CWP-1030 | T-PIP-010 | PIP | DEMO.CON.PIP | 5x10 Construction | 599.4 | LF | 563.4 | 6 | 10 | Physical | 10-300 | AREA-100 PIP CWP-1030 | PIPEFTR 44, WELDER 26, MANLIFT 10, HELPER 20 | Spools received 10, Supports set 20, Spools erected 35, Welds complete 25, Punch cleared 10 | 2026-10-20 | 2026-10-28 | Validated |  |  | PIP-1030-0040 FS 0 |
| PIP-1030-0060 | Pipe erection — line group 06 | CWP-1030 | T-PIP-010 | PIP | DEMO.CON.PIP | 7x10 Site Turnaround | 660.6 | LF | 621.0 | 6 | 10 | Physical | 10-300 | AREA-100 PIP CWP-1030 | PIPEFTR 44, WELDER 26, MANLIFT 10, HELPER 20 | Spools received 10, Supports set 20, Spools erected 35, Welds complete 25, Punch cleared 10 | 2026-10-23 | 2026-11-02 | Validated |  |  | PIP-1030-0050 FS 0 |
| PIP-1030-0070 | Pipe erection — rack module 07 | CWP-1030 | T-PIP-010 | PIP | DEMO.CON.PIP | 5x10 Construction | 673.7 | LF | 633.3 | 6 | 10 | Physical | 10-300 | AREA-100 PIP CWP-1030 | PIPEFTR 44, WELDER 26, MANLIFT 10, HELPER 20 | Spools received 10, Supports set 20, Spools erected 35, Welds complete 25, Punch cleared 10 | 2026-10-28 | 2026-11-05 | Validated |  |  | PIP-1030-0060 FS 0 |
| PIP-1030-0080 | Pipe erection — tie-in set 08 | CWP-1030 | T-PIP-010 | PIP | DEMO.CON.PIP | 5x10 Construction | 586.0 | LF | 550.8 | 6 | 10 | Physical | 10-300 | AREA-100 PIP CWP-1030 | PIPEFTR 44, WELDER 26, MANLIFT 10, HELPER 20 | Spools received 10, Supports set 20, Spools erected 35, Welds complete 25, Punch cleared 10 | 2026-11-02 | 2026-11-10 | Validated |  |  | PIP-1030-0070 FS 0 |
| PIP-1030-0090 | Pipe erection — valve station 09 | CWP-1030 | T-PIP-010 | PIP | DEMO.CON.PIP | 5x10 Construction | 652.3 | LF | 613.2 | 6 | 10 | Physical | 10-300 | AREA-100 PIP CWP-1030 | PIPEFTR 44, WELDER 26, MANLIFT 10, HELPER 20 | Spools received 10, Supports set 20, Spools erected 35, Welds complete 25, Punch cleared 10 | 2026-11-05 | 2026-11-13 | Validated |  |  | PIP-1030-0080 FS 0 |
| PIP-1030-0100 | Pipe erection — drain header 10 | CWP-1030 | T-PIP-010 | PIP | DEMO.CON.PIP | 5x10 Construction | 730.4 | LF | 686.6 | 7 | 10 | Physical | 10-300 | AREA-100 PIP CWP-1030 | PIPEFTR 44, WELDER 26, MANLIFT 10, HELPER 20 | Spools received 10, Supports set 20, Spools erected 35, Welds complete 25, Punch cleared 10 | 2026-11-10 | 2026-11-19 | Validated |  |  | PIP-1030-0090 FS 0 |
| PIP-1030-0110 | Pipe erection — line group 11 | CWP-1030 | T-PIP-010 | PIP | DEMO.CON.PIP | 5x10 Construction | 629.7 | LF | 591.9 | 6 | 10 | Physical | 10-300 | AREA-100 PIP CWP-1030 | PIPEFTR 44, WELDER 26, MANLIFT 10, HELPER 20 | Spools received 10, Supports set 20, Spools erected 35, Welds complete 25, Punch cleared 10 | 2026-11-13 | 2026-11-23 | Validated |  |  | PIP-1030-0100 FS 0 |
| PIP-1030-0120 | Pipe erection — rack module 12 | CWP-1030 | T-PIP-010 | PIP | DEMO.CON.PIP | 5x10 Construction | 611.4 | LF | 574.7 | 6 | 10 | Physical | 10-300 | AREA-100 PIP CWP-1030 | PIPEFTR 44, WELDER 26, MANLIFT 10, HELPER 20 | Spools received 10, Supports set 20, Spools erected 35, Welds complete 25, Punch cleared 10 | 2026-11-18 | 2026-11-26 | Validated |  |  | PIP-1030-0110 FS 0 |
| PIP-1030-0130 | Pipe erection — tie-in set 13 | CWP-1030 | T-PIP-010 | PIP | DEMO.CON.PIP | 5x10 Construction | 780.1 | LF | 733.3 | 7 | 10 | Physical | 10-300 | AREA-100 PIP CWP-1030 | PIPEFTR 44, WELDER 26, MANLIFT 10, HELPER 20 | Spools received 10, Supports set 20, Spools erected 35, Welds complete 25, Punch cleared 10 | 2026-11-23 | 2026-12-02 | Validated |  |  | PIP-1030-0120 FS 0 |
| PIP-1030-0140 | Pipe erection — valve station 14 | CWP-1030 | T-PIP-010 | PIP | DEMO.CON.PIP | 5x10 Construction | 768.9 | LF | 722.8 | 7 | 10 | Physical | 10-300 | AREA-100 PIP CWP-1030 | PIPEFTR 44, WELDER 26, MANLIFT 10, HELPER 20 | Spools received 10, Supports set 20, Spools erected 35, Welds complete 25, Punch cleared 10 | 2026-11-26 | 2026-12-07 | Validated |  |  | PIP-1030-0130 FS 0 |
| PIP-1030-0150 | Pipe erection — drain header 15 | CWP-1030 | T-PIP-010 | PIP | DEMO.CON.PIP | 5x10 Construction | 822.9 | LF | 773.5 | 8 | 10 | Physical | 10-300 | AREA-100 PIP CWP-1030 | PIPEFTR 44, WELDER 26, MANLIFT 10, HELPER 20 | Spools received 10, Supports set 20, Spools erected 35, Welds complete 25, Punch cleared 10 | 2026-12-01 | 2026-12-11 | Validated |  |  | PIP-1030-0140 FS 0 |
| PIP-1030-0160 | Pipe erection — line group 16 | CWP-1030 | T-PIP-010 | PIP | DEMO.CON.PIP | 5x10 Construction | 684.1 | LF | 643.1 | 6 | 10 | Physical | 10-300 | AREA-100 PIP CWP-1030 | PIPEFTR 44, WELDER 26, MANLIFT 10, HELPER 20 | Spools received 10, Supports set 20, Spools erected 35, Welds complete 25, Punch cleared 10 | 2026-12-07 | 2026-12-15 | Validated |  |  | PIP-1030-0150 FS 0 |
| MEC-1040-0010 | Equipment set and align — pump set 01 | CWP-1040 | T-MEC-010 | MEC | DEMO.CON.MEC | 5x10 Construction | 1.7 | ea | 163.2 | 4 | 4 | Physical | 10-400 | AREA-200 MEC CWP-1040 | MILLWRIGHT 48, CRANE-100T 22, HELPER 30 | Foundation accepted 10, Set on foundation 30, Aligned 30, Grouted 20, Released to piping 10 | 2026-07-06 | 2026-07-10 | In progress | MEC-1040-0010 | RUN-0001 |  |
| MEC-1040-0020 | Equipment set and align — compressor train 02 | CWP-1040 | T-MEC-010 | MEC | DEMO.CON.MEC | 5x10 Construction | 1.8 | ea | 172.8 | 4 | 4 | Physical | 10-400 | AREA-200 MEC CWP-1040 | MILLWRIGHT 48, CRANE-100T 22, HELPER 30 | Foundation accepted 10, Set on foundation 30, Aligned 30, Grouted 20, Released to piping 10 | 2026-07-08 | 2026-07-14 | In progress | MEC-1040-0020 | RUN-0001 | MEC-1040-0010 FS 0 |
| MEC-1040-0030 | Equipment set and align — exchanger 03 | CWP-1040 | T-MEC-010 | MEC | DEMO.CON.MEC | 5x10 Construction | 2.1 | ea | 201.6 | 5 | 4 | Physical | 10-400 | AREA-200 MEC CWP-1040 | MILLWRIGHT 48, CRANE-100T 22, HELPER 30 | Foundation accepted 10, Set on foundation 30, Aligned 30, Grouted 20, Released to piping 10 | 2026-07-10 | 2026-07-17 | In progress | MEC-1040-0030 | RUN-0001 | MEC-1040-0020 FS 0 |
| MEC-1040-0040 | Equipment set and align — vessel 04 | CWP-1040 | T-MEC-010 | MEC | DEMO.CON.MEC | 5x10 Construction | 1.8 | ea | 172.8 | 4 | 4 | Physical | 10-400 | AREA-200 MEC CWP-1040 | MILLWRIGHT 48, CRANE-100T 22, HELPER 30 | Foundation accepted 10, Set on foundation 30, Aligned 30, Grouted 20, Released to piping 10 | 2026-07-14 | 2026-07-20 | In progress | MEC-1040-0040 | RUN-0001 | MEC-1040-0030 FS 0 |
| MEC-1040-0050 | Equipment set and align — blower 05 | CWP-1040 | T-MEC-010 | MEC | DEMO.CON.MEC | 5x10 Construction | 2.1 | ea | 201.6 | 5 | 4 | Physical | 10-400 | AREA-200 MEC CWP-1040 | MILLWRIGHT 48, CRANE-100T 22, HELPER 30 | Foundation accepted 10, Set on foundation 30, Aligned 30, Grouted 20, Released to piping 10 | 2026-07-16 | 2026-07-23 | In progress | MEC-1040-0050 | RUN-0001 | MEC-1040-0040 FS 0 |
| MEC-1040-0060 | Equipment set and align — pump set 06 | CWP-1040 | T-MEC-010 | MEC | DEMO.CON.MEC | 5x10 Construction | 2.3 | ea | 220.8 | 6 | 4 | Physical | 10-400 | AREA-200 MEC CWP-1040 | MILLWRIGHT 48, CRANE-100T 22, HELPER 30 | Foundation accepted 10, Set on foundation 30, Aligned 30, Grouted 20, Released to piping 10 | 2026-07-20 | 2026-07-28 | In progress | MEC-1040-0060 | RUN-0001 | MEC-1040-0050 FS 0 |
| MEC-1040-0070 | Equipment set and align — compressor train 07 | CWP-1040 | T-MEC-010 | MEC | DEMO.CON.MEC | 5x10 Construction | 2.2 | ea | 211.2 | 5 | 4 | Physical | 10-400 | AREA-200 MEC CWP-1040 | MILLWRIGHT 48, CRANE-100T 22, HELPER 30 | Foundation accepted 10, Set on foundation 30, Aligned 30, Grouted 20, Released to piping 10 | 2026-07-23 | 2026-07-30 | In progress | MEC-1040-0070 | RUN-0001 | MEC-1040-0060 FS 0 |
| PIP-1050-0170 | Field weld — line group 01 | CWP-1050 | T-PIP-020 | PIP | DEMO.CON.PIP | 5x10 Construction | 167.1 | dia-in | 192.2 | 2 | 8 | Units | 10-300 | AREA-200 PIP CWP-1050 | WELDER 62, PIPEFTR 24, HELPER 14 | Fit up 30, Weld out 50, NDE accepted 20 | 2026-10-19 | 2026-10-21 | Draft |  |  |  |
| PIP-1050-0180 | Field weld — rack module 02 | CWP-1050 | T-PIP-020 | PIP | DEMO.CON.PIP | 5x10 Construction | 166.5 | dia-in | 191.5 | 2 | 8 | Units | 10-300 | AREA-200 PIP CWP-1050 | WELDER 62, PIPEFTR 24, HELPER 14 | Fit up 30, Weld out 50, NDE accepted 20 | 2026-10-20 | 2026-10-22 | Draft |  |  | PIP-1050-0170 FS 0 |
| PIP-1050-0190 | Field weld — tie-in set 03 | CWP-1050 | T-PIP-020 | PIP | DEMO.CON.PIP | 5x10 Construction | 177.1 | dia-in | 203.7 | 3 | 8 | Units | 10-300 | AREA-200 PIP CWP-1050 | WELDER 62, PIPEFTR 24, HELPER 14 | Fit up 30, Weld out 50, NDE accepted 20 | 2026-10-21 | 2026-10-26 | Draft |  |  | PIP-1050-0180 FS 0 |
| PIP-1050-0200 | Field weld — valve station 04 | CWP-1050 | T-PIP-020 | PIP | DEMO.CON.PIP | 5x10 Construction | 156.0 | dia-in | 179.4 | 2 | 8 | Units | 10-300 | AREA-200 PIP CWP-1050 | WELDER 62, PIPEFTR 24, HELPER 14 | Fit up 30, Weld out 50, NDE accepted 20 | 2026-10-22 | 2026-10-26 | Draft |  |  | PIP-1050-0190 FS 0 |
| PIP-1050-0210 | Field weld — drain header 05 | CWP-1050 | T-PIP-020 | PIP | DEMO.CON.PIP | 5x10 Construction | 178.5 | dia-in | 205.3 | 3 | 8 | Units | 10-300 | AREA-200 PIP CWP-1050 | WELDER 62, PIPEFTR 24, HELPER 14 | Fit up 30, Weld out 50, NDE accepted 20 | 2026-10-23 | 2026-10-28 | Draft |  |  | PIP-1050-0200 FS 0 |
| PIP-1050-0220 | Field weld — line group 06 | CWP-1050 | T-PIP-020 | PIP | DEMO.CON.PIP | 5x10 Construction | 170.9 | dia-in | 196.5 | 2 | 8 | Units | 10-300 | AREA-200 PIP CWP-1050 | WELDER 62, PIPEFTR 24, HELPER 14 | Fit up 30, Weld out 50, NDE accepted 20 | 2026-10-26 | 2026-10-28 | Draft |  |  | PIP-1050-0210 FS 0 |
| PIP-1050-0230 | Field weld — rack module 07 | CWP-1050 | T-PIP-020 | PIP | DEMO.CON.PIP | 5x10 Construction | 181.0 | dia-in | 208.1 | 3 | 8 | Units | 10-300 | AREA-200 PIP CWP-1050 | WELDER 62, PIPEFTR 24, HELPER 14 | Fit up 30, Weld out 50, NDE accepted 20 | 2026-10-27 | 2026-10-30 | Draft |  |  | PIP-1050-0220 FS 0 |
| PIP-1050-0240 | Field weld — tie-in set 08 | CWP-1050 | T-PIP-020 | PIP | DEMO.CON.PIP | 5x10 Construction | 167.8 | dia-in | 193.0 | 2 | 8 | Units | 10-300 | AREA-200 PIP CWP-1050 | WELDER 62, PIPEFTR 24, HELPER 14 | Fit up 30, Weld out 50, NDE accepted 20 | 2026-10-28 | 2026-10-30 | Draft |  |  | PIP-1050-0230 FS 0 |
| PIP-1050-0250 | Field weld — valve station 09 | CWP-1050 | T-PIP-020 | PIP | DEMO.CON.PIP | 5x10 Construction | 220.3 | dia-in | 253.3 | 3 | 8 | Units | 10-300 | AREA-200 PIP CWP-1050 | WELDER 62, PIPEFTR 24, HELPER 14 | Fit up 30, Weld out 50, NDE accepted 20 | 2026-10-29 | 2026-11-03 | Draft |  |  | PIP-1050-0240 FS 0 |
| PIP-1050-0260 | Field weld — drain header 10 | CWP-1050 | T-PIP-020 | PIP | DEMO.CON.PIP | 5x10 Construction | 179.1 | dia-in | 206.0 | 3 | 8 | Units | 10-300 | AREA-200 PIP CWP-1050 | WELDER 62, PIPEFTR 24, HELPER 14 | Fit up 30, Weld out 50, NDE accepted 20 | 2026-10-30 | 2026-11-04 | Draft |  |  | PIP-1050-0250 FS 0 |
| PIP-1050-0270 | Field weld — line group 11 | CWP-1050 | T-PIP-020 | PIP | DEMO.CON.PIP | 5x10 Construction | 199.4 | dia-in | 229.3 | 3 | 8 | Units | 10-300 | AREA-200 PIP CWP-1050 | WELDER 62, PIPEFTR 24, HELPER 14 | Fit up 30, Weld out 50, NDE accepted 20 | 2026-11-02 | 2026-11-05 | Draft |  |  | PIP-1050-0260 FS 0 |
| PIP-1050-0280 | Field weld — rack module 12 | CWP-1050 | T-PIP-020 | PIP | DEMO.CON.PIP | 5x10 Construction | 197.4 | dia-in | 227.0 | 3 | 8 | Units | 10-300 | AREA-200 PIP CWP-1050 | WELDER 62, PIPEFTR 24, HELPER 14 | Fit up 30, Weld out 50, NDE accepted 20 | 2026-11-03 | 2026-11-06 | Draft |  |  | PIP-1050-0270 FS 0 |
| PIP-1050-0290 | Field weld — tie-in set 13 | CWP-1050 | T-PIP-020 | PIP | DEMO.CON.PIP | 5x10 Construction | 145.7 | dia-in | 167.6 | 2 | 8 | Units | 10-300 | AREA-200 PIP CWP-1050 | WELDER 62, PIPEFTR 24, HELPER 14 | Fit up 30, Weld out 50, NDE accepted 20 | 2026-11-04 | 2026-11-06 | Draft |  |  | PIP-1050-0280 FS 0 |
| PIP-1050-0300 | Field weld — valve station 14 | CWP-1050 | T-PIP-020 | PIP | DEMO.CON.PIP | 5x10 Construction | 175.3 | dia-in | 201.6 | 3 | 8 | Units | 10-300 | AREA-200 PIP CWP-1050 | WELDER 62, PIPEFTR 24, HELPER 14 | Fit up 30, Weld out 50, NDE accepted 20 | 2026-11-05 | 2026-11-10 | Draft |  |  | PIP-1050-0290 FS 0 |
| PIP-1050-0310 | Field weld — drain header 15 | CWP-1050 | T-PIP-020 | PIP | DEMO.CON.PIP | 5x10 Construction | 216.6 | dia-in | 249.1 | 3 | 8 | Units | 10-300 | AREA-200 PIP CWP-1050 | WELDER 62, PIPEFTR 24, HELPER 14 | Fit up 30, Weld out 50, NDE accepted 20 | 2026-11-06 | 2026-11-11 | Draft |  |  | PIP-1050-0300 FS 0 |
| PIP-1050-0320 | Field weld — line group 16 | CWP-1050 | T-PIP-020 | PIP | DEMO.CON.PIP | 5x10 Construction | 161.3 | dia-in | 185.5 | 2 | 8 | Units | 10-300 | AREA-200 PIP CWP-1050 | WELDER 62, PIPEFTR 24, HELPER 14 | Fit up 30, Weld out 50, NDE accepted 20 | 2026-11-09 | 2026-11-11 | Draft |  |  | PIP-1050-0310 FS 0 |
| ELE-1060-0010 | Cable tray installation — tray run 01 | CWP-1060 | T-ELE-010 | ELE | DEMO.CON.ELE | 5x10 Construction | 773.5 | LF | 340.3 | 6 | 6 | Physical | 10-500 | AREA-300 ELE CWP-1060 | ELECT 58, MANLIFT 12, HELPER 30 | Supports installed 35, Tray installed 45, Covers and bonding 20 | 2026-09-28 | 2026-10-06 | Draft |  |  |  |
| ELE-1060-0020 | Cable tray installation — feeder group 02 | CWP-1060 | T-ELE-010 | ELE | DEMO.CON.ELE | 5x10 Construction | 760.7 | LF | 334.7 | 6 | 6 | Physical | 10-500 | AREA-300 ELE CWP-1060 | ELECT 58, MANLIFT 12, HELPER 30 | Supports installed 35, Tray installed 45, Covers and bonding 20 | 2026-10-01 | 2026-10-09 | Draft |  |  | ELE-1060-0010 FS 0 |
| ELE-1060-0030 | Cable tray installation — lighting branch 03 | CWP-1060 | T-ELE-010 | ELE | DEMO.CON.ELE | 5x10 Construction | 670.6 | LF | 295.1 | 5 | 6 | Physical | 10-500 | AREA-300 ELE CWP-1060 | ELECT 58, MANLIFT 12, HELPER 30 | Supports installed 35, Tray installed 45, Covers and bonding 20 | 2026-10-06 | 2026-10-13 | Draft |  |  | ELE-1060-0020 FS 0 |
| ELE-1060-0040 | Cable tray installation — grounding grid 04 | CWP-1060 | T-ELE-010 | ELE | DEMO.CON.ELE | 5x10 Construction | 709.1 | LF | 312.0 | 5 | 6 | Physical | 10-500 | AREA-300 ELE CWP-1060 | ELECT 58, MANLIFT 12, HELPER 30 | Supports installed 35, Tray installed 45, Covers and bonding 20 | 2026-10-08 | 2026-10-15 | Draft |  |  | ELE-1060-0030 FS 0 |
| ELE-1060-0050 | Cable tray installation — tray run 05 | CWP-1060 | T-ELE-010 | ELE | DEMO.CON.ELE | 5x10 Construction | 748.1 | LF | 329.2 | 5 | 6 | Physical | 10-500 | AREA-300 ELE CWP-1060 | ELECT 58, MANLIFT 12, HELPER 30 | Supports installed 35, Tray installed 45, Covers and bonding 20 | 2026-10-12 | 2026-10-19 | Draft |  |  | ELE-1060-0040 FS 0 |

| ws_id | name | pkg_id | template_id | discipline | wbs_code | calendar | quantity | uom | budget_hours | duration_days | crew_size | complete_pct_type | account | codes | crew | steps | planned_start | planned_finish | state | predecessors |
| --- | --- | --- | --- | --- | --- | --- | --- | --- | --- | --- | --- | --- | --- | --- | --- | --- | --- | --- | --- | --- |
| ELE-1060-0060 | Cable tray installation — feeder group 06 | CWP-1060 | T-ELE-010 | ELE | DEMO.CON.ELE | 5x10 Construction | 600.4 | LF | 264.2 | 4 | 6 | Physical | 10-500 | AREA-300 ELE CWP-1060 | ELECT 58, MANLIFT 12, HELPER 30 | Supports installed 35, Tray installed 45, Covers and bonding 20 | 2026-10-14 | 2026-10-20 | Draft | ELE-1060-0050 FS 0 |
| ELE-1060-0070 | Cable tray installation — lighting branch 07 | CWP-1060 | T-ELE-010 | ELE | DEMO.CON.ELE | 5x10 Construction | 594.5 | LF | 261.6 | 4 | 6 | Physical | 10-500 | AREA-300 ELE CWP-1060 | ELECT 58, MANLIFT 12, HELPER 30 | Supports installed 35, Tray installed 45, Covers and bonding 20 | 2026-10-16 | 2026-10-22 | Draft | ELE-1060-0060 FS 0 |
| ELE-1060-0080 | Cable tray installation — grounding grid 08 | CWP-1060 | T-ELE-010 | ELE | DEMO.CON.ELE | 5x10 Construction | 744.9 | LF | 327.8 | 5 | 6 | Physical | 10-500 | AREA-300 ELE CWP-1060 | ELECT 58, MANLIFT 12, HELPER 30 | Supports installed 35, Tray installed 45, Covers and bonding 20 | 2026-10-20 | 2026-10-27 | Draft | ELE-1060-0070 FS 0 |
| ELE-1060-0090 | Cable tray installation — tray run 09 | CWP-1060 | T-ELE-010 | ELE | DEMO.CON.ELE | 5x10 Construction | 743.3 | LF | 327.1 | 5 | 6 | Physical | 10-500 | AREA-300 ELE CWP-1060 | ELECT 58, MANLIFT 12, HELPER 30 | Supports installed 35, Tray installed 45, Covers and bonding 20 | 2026-10-22 | 2026-10-29 | Draft | ELE-1060-0080 FS 0 |
| ELE-1060-0100 | Cable tray installation — feeder group 10 | CWP-1060 | T-ELE-010 | ELE | DEMO.CON.ELE | 5x10 Construction | 716.4 | LF | 315.2 | 5 | 6 | Physical | 10-500 | AREA-300 ELE CWP-1060 | ELECT 58, MANLIFT 12, HELPER 30 | Supports installed 35, Tray installed 45, Covers and bonding 20 | 2026-10-26 | 2026-11-02 | Draft | ELE-1060-0090 FS 0 |
| ELE-1060-0110 | Cable tray installation — lighting branch 11 | CWP-1060 | T-ELE-010 | ELE | DEMO.CON.ELE | 5x10 Construction | 812.5 | LF | 357.5 | 6 | 6 | Physical | 10-500 | AREA-300 ELE CWP-1060 | ELECT 58, MANLIFT 12, HELPER 30 | Supports installed 35, Tray installed 45, Covers and bonding 20 | 2026-10-28 | 2026-11-05 | Draft | ELE-1060-0100 FS 0 |
| INS-1070-0010 | Instrument installation and loop check — loop group 01 | CWP-1070 | T-INS-010 | INS | DEMO.CON.INS | 5x10 Construction | 16.6 | ea | 190.9 | 5 | 4 | Physical | 10-600 | AREA-300 INS CWP-1070 | INSTR-TECH 70, HELPER 30 | Bracket and instrument set 30, Tubing and wiring 30, Calibrated 20, Loop checked 20 | 2026-11-02 | 2026-11-09 | Draft |  |
| INS-1070-0020 | Instrument installation and loop check — transmitter set 02 | CWP-1070 | T-INS-010 | INS | DEMO.CON.INS | 5x10 Construction | 20.7 | ea | 238.0 | 6 | 4 | Physical | 10-600 | AREA-300 INS CWP-1070 | INSTR-TECH 70, HELPER 30 | Bracket and instrument set 30, Tubing and wiring 30, Calibrated 20, Loop checked 20 | 2026-11-04 | 2026-11-12 | Draft | INS-1070-0010 FS 0 |
| INS-1070-0030 | Instrument installation and loop check — control valve set 03 | CWP-1070 | T-INS-010 | INS | DEMO.CON.INS | 5x10 Construction | 17.8 | ea | 204.7 | 5 | 4 | Physical | 10-600 | AREA-300 INS CWP-1070 | INSTR-TECH 70, HELPER 30 | Bracket and instrument set 30, Tubing and wiring 30, Calibrated 20, Loop checked 20 | 2026-11-09 | 2026-11-16 | Draft | INS-1070-0020 FS 0 |
| INS-1070-0040 | Instrument installation and loop check — loop group 04 | CWP-1070 | T-INS-010 | INS | DEMO.CON.INS | 5x10 Construction | 22.1 | ea | 254.2 | 6 | 4 | Physical | 10-600 | AREA-300 INS CWP-1070 | INSTR-TECH 70, HELPER 30 | Bracket and instrument set 30, Tubing and wiring 30, Calibrated 20, Loop checked 20 | 2026-11-11 | 2026-11-19 | Draft | INS-1070-0030 FS 0 |
| INS-1070-0050 | Instrument installation and loop check — transmitter set 05 | CWP-1070 | T-INS-010 | INS | DEMO.CON.INS | 5x10 Construction | 18.8 | ea | 216.2 | 5 | 4 | Physical | 10-600 | AREA-300 INS CWP-1070 | INSTR-TECH 70, HELPER 30 | Bracket and instrument set 30, Tubing and wiring 30, Calibrated 20, Loop checked 20 | 2026-11-16 | 2026-11-23 | Draft | INS-1070-0040 FS 0 |
| INS-1070-0060 | Instrument installation and loop check — control valve set 06 | CWP-1070 | T-INS-010 | INS | DEMO.CON.INS | 5x10 Construction | 16.8 | ea | 193.2 | 5 | 4 | Physical | 10-600 | AREA-300 INS CWP-1070 | INSTR-TECH 70, HELPER 30 | Bracket and instrument set 30, Tubing and wiring 30, Calibrated 20, Loop checked 20 | 2026-11-18 | 2026-11-25 | Draft | INS-1070-0050 FS 0 |
| INS-1070-0070 | Instrument installation and loop check — loop group 07 | CWP-1070 | T-INS-010 | INS | DEMO.CON.INS | 5x10 Construction | 20.4 | ea | 234.6 | 6 | 4 | Physical | 10-600 | AREA-300 INS CWP-1070 | INSTR-TECH 70, HELPER 30 | Bracket and instrument set 30, Tubing and wiring 30, Calibrated 20, Loop checked 20 | 2026-11-20 | 2026-11-30 | Draft | INS-1070-0060 FS 0 |
| INS-1070-0080 | Instrument installation and loop check — transmitter set 08 | CWP-1070 | T-INS-010 | INS | DEMO.CON.INS | 5x10 Construction | 15.1 | ea | 173.7 | 4 | 4 | Physical | 10-600 | AREA-300 INS CWP-1070 | INSTR-TECH 70, HELPER 30 | Bracket and instrument set 30, Tubing and wiring 30, Calibrated 20, Loop checked 20 | 2026-11-25 | 2026-12-01 | Draft | INS-1070-0070 FS 0 |
| INS-1070-0090 | Instrument installation and loop check — control valve set 09 | CWP-1070 | T-INS-010 | INS | DEMO.CON.INS | 5x10 Construction | 19.7 | ea | 226.5 | 6 | 4 | Physical | 10-600 | AREA-300 INS CWP-1070 | INSTR-TECH 70, HELPER 30 | Bracket and instrument set 30, Tubing and wiring 30, Calibrated 20, Loop checked 20 | 2026-11-27 | 2026-12-07 | Draft | INS-1070-0080 FS 0 |
| CIV-1080-0150 | Slab on grade — pile cap 01 | CWP-1080 | T-CIV-020 | CIV | DEMO.CON.CIV | 5x10 Construction | 8300.2 | SF | 2158.1 | 36 | 6 | Physical | 10-100 | AREA-320 CIV CWP-1080 | CARP 30, RODBUSTER 25, CIVIL-CRW 30, HELPER 15 | Subgrade prepared 20, Edge form and rebar 30, Concrete poured 35, Cure and finish 15 | 2026-11-16 | 2027-01-05 | Draft |  |
| CIV-1080-0160 | Slab on grade — pedestal group 02 | CWP-1080 | T-CIV-020 | CIV | DEMO.CON.CIV | 5x10 Construction | 7602.3 | SF | 1976.6 | 33 | 6 | Physical | 10-100 | AREA-320 CIV CWP-1080 | CARP 30, RODBUSTER 25, CIVIL-CRW 30, HELPER 15 | Subgrade prepared 20, Edge form and rebar 30, Concrete poured 35, Cure and finish 15 | 2026-12-10 | 2027-01-26 | Draft | CIV-1080-0150 FS 0 |
| CIV-1080-0170 | Slab on grade — equipment foundation 03 | CWP-1080 | T-CIV-020 | CIV | DEMO.CON.CIV | 5x10 Construction | 7900.9 | SF | 2054.2 | 34 | 6 | Physical | 10-100 | AREA-320 CIV CWP-1080 | CARP 30, RODBUSTER 25, CIVIL-CRW 30, HELPER 15 | Subgrade prepared 20, Edge form and rebar 30, Concrete poured 35, Cure and finish 15 | 2027-01-01 | 2027-02-18 | Draft | CIV-1080-0160 FS 0 |
| CIV-1080-0180 | Slab on grade — sump 04 | CWP-1080 | T-CIV-020 | CIV | DEMO.CON.CIV | 5x10 Construction | 7702.9 | SF | 2002.8 | 33 | 6 | Physical | 10-100 | AREA-320 CIV CWP-1080 | CARP 30, RODBUSTER 25, CIVIL-CRW 30, HELPER 15 | Subgrade prepared 20, Edge form and rebar 30, Concrete poured 35, Cure and finish 15 | 2027-01-26 | 2027-03-12 | Draft | CIV-1080-0170 FS 0 |
| CIV-1080-0190 | Slab on grade — duct bank 05 | CWP-1080 | T-CIV-020 | CIV | DEMO.CON.CIV | 5x10 Construction | 7955.1 | SF | 2068.3 | 34 | 6 | Physical | 10-100 | AREA-320 CIV CWP-1080 | CARP 30, RODBUSTER 25, CIVIL-CRW 30, HELPER 15 | Subgrade prepared 20, Edge form and rebar 30, Concrete poured 35, Cure and finish 15 | 2027-02-17 | 2027-04-06 | Draft | CIV-1080-0180 FS 0 |
| CIV-1080-0200 | Slab on grade — slab panel 06 | CWP-1080 | T-CIV-020 | CIV | DEMO.CON.CIV | 5x10 Construction | 6476.1 | SF | 1683.8 | 28 | 6 | Physical | 10-100 | AREA-320 CIV CWP-1080 | CARP 30, RODBUSTER 25, CIVIL-CRW 30, HELPER 15 | Subgrade prepared 20, Edge form and rebar 30, Concrete poured 35, Cure and finish 15 | 2027-03-12 | 2027-04-21 | Draft | CIV-1080-0190 FS 0 |
| CIV-1080-0210 | Slab on grade — pile cap 07 | CWP-1080 | T-CIV-020 | CIV | DEMO.CON.CIV | 5x10 Construction | 6799.3 | SF | 1767.8 | 29 | 6 | Physical | 10-100 | AREA-320 CIV CWP-1080 | CARP 30, RODBUSTER 25, CIVIL-CRW 30, HELPER 15 | Subgrade prepared 20, Edge form and rebar 30, Concrete poured 35, Cure and finish 15 | 2027-04-01 | 2027-05-12 | Draft | CIV-1080-0200 FS 0 |
| CIV-1080-0220 | Slab on grade — pedestal group 08 | CWP-1080 | T-CIV-020 | CIV | DEMO.CON.CIV | 5x10 Construction | 7541.0 | SF | 1960.7 | 33 | 6 | Physical | 10-100 | AREA-320 CIV CWP-1080 | CARP 30, RODBUSTER 25, CIVIL-CRW 30, HELPER 15 | Subgrade prepared 20, Edge form and rebar 30, Concrete poured 35, Cure and finish 15 | 2027-04-21 | 2027-06-07 | Draft | CIV-1080-0210 FS 0 |

Links (uid, no, title, area, discipline, date_from, date_to, description, status, created_by, created, log):
- alb-001 ALB-001 Pipe rack 2 — steel erection Pipe rack 2 Structural 2026-07-20 2026-08-14 Erection sequence, bolting and grating on pipe rack 2. Closed R. Salinas 2026-07-20 2026-08-14 R. Salinas Status Open → Closed
- alb-002 ALB-002 Unit 20 piping installation Unit 20 Piping 2026-08-03 Spool setting, field welds and test loops. Open T. Mirelez 2026-08-03
- alb-003 ALB-003 Pre-pour inspections Pump foundations Civil 2026-08-10 Rebar, embeds and formwork before each pour. Open A. Nwosu 2026-08-10
- alb-004 ALB-004 Site safety walk-downs Whole site HSE 2026-08-01 Weekly HSE walk-down findings. Open B. Kowalski 2026-08-01
